# MVP

Schedule from MS Project, 2023-01-16 to 2023-02-24.

## Calendars

- Standard: Mon-Fri 08:00-12:00, 13:00-17:00; Sat-Sun off.

## Resources

| Resource |
| --- |
| Lead |
| Arch |

## Schedule

| ID | WBS | Task | Duration | Start | Finish | Predecessors | Total slack | Resources | Work |
| --- | --- | --- | --- | --- | --- | --- | --- | --- | --- |
| 1 | 1 | **Develop eRecipeBox MVP 1.0** | 30d | 2023-01-16 08:00 | 2023-02-24 17:00 |  | 0d | Lead; Arch | 1452h |
| 2 | 1.1 | **Sprint 1 - Prod Vision,Soltn Mdl, UI Design, Research system design, Tst Str, Sprint Plan** | 5d | 2023-01-16 08:00 | 2023-01-20 17:00 |  | 0d | Lead; Arch | 164h |
| 3 | 1.1.1 | Create Domain Model, Product Vision, Solution Model V0.1 | 1d | 2023-01-16 08:00 | 2023-01-16 17:00 |  | 0d | Lead | 8h |
| 4 | 1.1.2 | Create UI Design V0.1 | 0.5d | 2023-01-17 08:00 | 2023-01-17 12:00 | 3 | 0d | Lead | 4h |
| 5 | 1.1.3 | Create sprint plan and estimate project cost V0.1 | 0.5d | 2023-01-17 13:00 | 2023-01-17 17:00 | 4 | 0d | Lead; Arch | 8h |
| 6 | 1.1.4 | Analyze legacy recipe data. Research automated testing tools | 0.5d | 2023-01-18 08:00 | 2023-01-18 12:00 | 5 | 0d | Lead | 4h |
| 7 | 1.1.5 | Create Test Strategy, Automated testing tools w/ PoC | 2d | 2023-01-18 13:00 | 2023-01-20 12:00 | 6 | 0d | Lead | 16h |
| 8 | 1.1.6 | Baseline Solution, UI Design & Sprint Plan. Review with Business | 0.5d | 2023-01-20 13:00 | 2023-01-20 17:00 | 7 | 0d | Lead | 4h |
| 9 | 1.1.7 | Evaluate & select 3rd party ORM and UI framework | 1d | 2023-01-16 08:00 | 2023-01-16 17:00 |  | 0d | Arch | 8h |
| 10 | 1.1.8 | CRUD PoC with 3rd party ORM and UI framework, 2 tier | 2d | 2023-01-17 08:00 | 2023-01-18 17:00 | 9 | 0d | Arch | 16h |
| 11 | 1.1.9 | Dev backup & restore DB | 2d | 2023-01-19 08:00 | 2023-01-20 17:00 | 10 | 0d | Arch | 16h |
| 12 | 1.2 | **Sprint 2 - Stabilize System Design, Dev Search/EditRC, Validate Test Strategy & tools** | 5d | 2023-01-23 08:00 | 2023-01-27 17:00 | 2 | 0d | Lead; Arch | 160h |
| 13 | 1.2.1 | Evaluate and select recipe website(s) for import | 0.5d | 2023-01-23 08:00 | 2023-01-23 12:00 |  | 0d | Lead | 4h |
| 14 | 1.2.2 | Develop and run automated tests against Sprint 1 | 4d | 2023-01-23 13:00 | 2023-01-27 12:00 | 13 | 0d | Lead | 32h |
| 15 | 1.2.3 | Update Test Strategy (automation and test data) | 0.5d | 2023-01-27 13:00 | 2023-01-27 17:00 | 14 | 0d | Lead | 4h |
| 16 | 1.2.4 | CRUD PoC, 3-tier using https WCF | 0.5d | 2023-01-23 08:00 | 2023-01-23 12:00 |  | 0d | Arch | 4h |
| 17 | 1.2.5 | Add support for SQLite, PostgreSQL | 0.5d | 2023-01-23 13:00 | 2023-01-23 17:00 | 16 | 0d | Arch | 4h |
| 18 | 1.2.6 | Dev business object classes (aka models) | 0.5d | 2023-01-24 08:00 | 2023-01-24 12:00 | 17 | 0d | Arch | 4h |
| 19 | 1.2.7 | Dev Import from AllRecipes.com | 1d | 2023-01-24 13:00 | 2023-01-25 12:00 | 18 | 0d | Arch | 8h |
| 20 | 1.2.8 | Dev SearchRecipeBox, EditRecipeCard V0.1 | 2d | 2023-01-25 13:00 | 2023-01-27 12:00 | 19 | 0d | Arch | 16h |
| 21 | 1.2.9 | Log all control names to support automated testing | 0.5d | 2023-01-27 13:00 | 2023-01-27 17:00 | 20 | 0d | Arch | 4h |
| 22 | 1.3 | **Sprint 3 - Dev Login/Import text,/EditGList/ViewRC. Add bus rules. Detailed Spec. Test Sprint 2** | 5d | 2023-01-30 08:00 | 2023-02-03 17:00 | 12 | 0d | Lead; Arch | 160h |
| 23 | 1.3.1 | Test Sprint 2. Refactor Automated Test Design | 3.5d | 2023-01-30 08:00 | 2023-02-02 12:00 |  | 0d | Lead | 28h |
| 24 | 1.3.2 | Review test results with Business. Decide to Add Calendar | 0.5d | 2023-02-02 13:00 | 2023-02-02 17:00 | 23 | 0d | Lead | 4h |
| 25 | 1.3.3 | Add Calendar to System Spec | 0.5d | 2023-02-03 08:00 | 2023-02-03 12:00 | 24 | 0d | Lead | 4h |
| 26 | 1.3.4 | Create Detailed Spec V1.0 | 0.5d | 2023-02-03 13:00 | 2023-02-03 17:00 | 25 | 0d | Lead | 4h |
| 27 | 1.3.5 | Dev ImportRecipeCard from Text | 1d | 2023-01-30 08:00 | 2023-01-30 17:00 |  | 0d | Arch | 8h |
| 28 | 1.3.6 | Dev business rules, enforce unique IDs | 1d | 2023-01-31 08:00 | 2023-01-31 17:00 | 27 | 0d | Arch | 8h |
| 29 | 1.3.7 | Dev LogIn w/ authentication | 1d | 2023-02-01 08:00 | 2023-02-01 17:00 | 28 | 0d | Arch | 8h |
| 30 | 1.3.8 | Dev EditGroceryList, ViewRecipeCard | 2d | 2023-02-02 08:00 | 2023-02-03 17:00 | 29 | 0d | Arch | 16h |

| ID | WBS | Task | Type | Duration | Start | Finish | Predecessors | Total slack | Free slack | Resources | Work |
| --- | --- | --- | --- | --- | --- | --- | --- | --- | --- | --- | --- |
| 31 | 1.4 | **Sprint 3.5 - Dev Calendar/Help/Admin/New lookups, Refactor, Bugs, Test Sprint 3** |  | 5d | 2023-02-06 08:00 | 2023-02-10 17:00 | 22 | 0d |  | Lead; Arch | 156h |
| 32 | 1.4.1 | Test Sprint 3, including stress test w/ large datastore |  | 2d | 2023-02-06 08:00 | 2023-02-07 17:00 |  | 0.5d | 0d | Lead | 16h |
| 33 | 1.4.2 | Refactor Automated Test Design |  | 1d | 2023-02-08 08:00 | 2023-02-08 17:00 | 32 | 0.5d | 0d | Lead | 8h |
| 34 | 1.4.3 | Update Test Strategy and Test Suite Design V0.2 - calendar, functional tests |  | 0.5d | 2023-02-09 08:00 | 2023-02-09 12:00 | 33 | 0.5d | 0d | Lead | 4h |
| 35 | 1.4.4 | Review test results with Business. GPT. Update System Spec. |  | 0.5d | 2023-02-09 13:00 | 2023-02-09 17:00 | 34 | 0.5d | 0d | Lead | 4h |
| 36 | 1.4.5 | Dev Calendar and GPT tests |  | 0.5d | 2023-02-10 08:00 | 2023-02-10 12:00 | 35 | 0.5d |  | Lead | 4h |
| 37 | 1.4.6 | Dev Calendar |  | 2d | 2023-02-06 08:00 | 2023-02-07 17:00 |  | 0d |  | Arch | 16h |
| 38 | 1.4.7 | Refactor & polish SimpleCRUDFramework, EditRecipeCard, SearchRecipeBox |  | 1.5d | 2023-02-08 08:00 | 2023-02-09 12:00 | 37 | 0d |  | Arch | 12h |
| 39 | 1.4.8 | Dev Help, Admin user |  | 0.5d | 2023-02-09 13:00 | 2023-02-09 17:00 | 38 | 0d |  | Arch | 4h |
| 40 | 1.4.9 | **Backlog issues found in Sprint 3** |  | 1d | 2023-02-09 17:00 | 2023-02-10 17:00 | 39 | 0d |  | Arch | 8h |
| 41 | 1.4.9.1 | Bug - SearchRecipeBox doesn’t search ItemDescription | milestone | 0d | 2023-02-09 17:00 | 2023-02-09 17:00 |  | 0d |  |  |  |
| 42 | 1.4.9.2 | Bug - RecipeCard saved with duplicate Title | milestone | 0d | 2023-02-09 17:00 | 2023-02-09 17:00 | 41 | 0d |  |  |  |
| 43 | 1.4.9.3 | …etc |  | 1d | 2023-02-10 08:00 | 2023-02-10 17:00 | 42 | 0d |  |  |  |
| 44 | 1.5 | **Sprint 4 - Dev GPT, Fix Punchlist, Prep Production, Final Acceptance Test** |  | 5d | 2023-02-13 08:00 | 2023-02-17 17:00 | 31 | 0d |  | Lead; Arch | 188h |
| 45 | 1.5.1 | Full Sys Test - Bus, Functional, NonFunctional |  | 2d | 2023-02-13 08:00 | 2023-02-14 17:00 |  | 0d |  | Lead | 16h |
| 46 | 1.5.2 | Test GPT |  | 0.5d | 2023-02-15 08:00 | 2023-02-15 12:00 | 49, 45 | 0d |  | Lead | 4h |
| 47 | 1.5.3 | Run final regression and acceptance tests |  | 2d | 2023-02-15 13:00 | 2023-02-17 12:00 | 46 | 0d |  | Lead | 16h |
| 48 | 1.5.4 | Develop UE education (video) |  | 0.5d | 2023-02-17 13:00 | 2023-02-17 17:00 | 47 | 0d |  | Lead | 4h |
| 49 | 1.5.5 | Dev GPT |  | 1d | 2023-02-13 08:00 | 2023-02-13 17:00 |  | 0d |  | Arch | 8h |
| 50 | 1.5.6 | Create production env & database |  | 0.5d | 2023-02-14 08:00 | 2023-02-14 12:00 | 49 | 0d |  | Arch | 4h |
| 51 | 1.5.7 | **Remaining MVP 1.0 backlog and punchlist tasks** |  | 3.5d | 2023-02-14 12:00 | 2023-02-17 17:00 | 50 | 0d |  | Arch | 56h |
| 52 | 1.5.7.1 | Bug - Import recipecard parser error 1 (15 oz can) black beans | milestone | 0d | 2023-02-14 12:00 | 2023-02-14 12:00 |  | 0d |  | Arch |  |
| 53 | 1.5.7.2 | Bug - App crashes with bad data | milestone | 0d | 2023-02-14 12:00 | 2023-02-14 12:00 | 52 | 0d |  | Arch |  |
| 54 | 1.5.7.3 | Bug - Order of Ingredient is not retained | milestone | 0d | 2023-02-14 12:00 | 2023-02-14 12:00 | 53 | 0d |  | Arch |  |
| 55 | 1.5.7.4 | Enh - Disallow duplicate keyword to RecipeCard | milestone | 0d | 2023-02-14 12:00 | 2023-02-14 12:00 | 54 | 0d |  | Arch |  |
| 56 | 1.5.7.5 | Enh - Enable import buttons only when creating a new recipe card | milestone | 0d | 2023-02-14 12:00 | 2023-02-14 12:00 | 55 | 0d |  | Arch |  |
| 57 | 1.5.7.6 | Bug - Scroll to the previously edited Recipe after closing the form | milestone | 0d | 2023-02-14 12:00 | 2023-02-14 12:00 | 56 | 0d |  | Arch |  |
| 58 | 1.5.7.7 | Enh - Prevent the schedular from changing to DayView mode | milestone | 0d | 2023-02-14 12:00 | 2023-02-14 12:00 | 57 | 0d |  | Arch |  |
| 59 | 1.5.7.8 | etc. |  | 3.5d | 2023-02-14 13:00 | 2023-02-17 17:00 | 58 | 0d |  | Arch | 28h |

| ID | WBS | Task | Type | Duration | Start | Finish | Predecessors | Total slack | Free slack | Resources | Work |
| --- | --- | --- | --- | --- | --- | --- | --- | --- | --- | --- | --- |
| 60 | 1.6 | **Sprint 5 - Deploy MVP 1.0, Update artifacts to As Built** |  | 5d | 2023-02-20 08:00 | 2023-02-24 17:00 | 44 | 0d |  | Lead; Arch | 144h |
| 61 | 1.6.1 | Deploy MVP1.0 to Production |  | 1d | 2023-02-20 08:00 | 2023-02-20 17:00 |  | 2d | 0d | Arch | 8h |
| 62 | 1.6.2 | Update System Design MVP1.0 |  | 2d | 2023-02-21 08:00 | 2023-02-22 17:00 | 61 | 2d |  | Arch | 16h |
| 63 | 1.6.3 | Update System Spec MVP1.0 |  | 1d | 2023-02-20 08:00 | 2023-02-20 17:00 |  | 0d |  | Lead | 8h |
| 64 | 1.6.4 | Finish test scripts and run FunctionalTestCase01 |  | 2d | 2023-02-21 08:00 | 2023-02-22 17:00 | 63 | 0d |  | Lead | 16h |
| 65 | 1.6.5 | Develop and run StressTestCase01 against large test data set |  | 1d | 2023-02-23 08:00 | 2023-02-23 17:00 | 64 | 0d |  | Lead | 8h |
| 66 | 1.6.6 | Update Test Documentation MVP1.0 |  | 1d | 2023-02-24 08:00 | 2023-02-24 17:00 | 65 | 0d |  | Lead | 8h |
| 67 | 2 | **eRecipeBox Backlog** |  | 0d | 2023-01-16 08:00 | 2023-01-16 08:00 |  | 30d |  |  |  |
| 68 | 2.1 | Bug - Sporadic error - Flyout window is already disposed | milestone | 0d | 2023-01-16 08:00 | 2023-01-16 08:00 |  | 30d |  |  |  |
| 69 | 2.2 | Advanced Search: arbitrary NOT AND OR combinations | milestone | 0d | 2023-01-16 08:00 | 2023-01-16 08:00 |  | 30d |  |  |  |
| 70 | 2.3 | Share my eRecipeBox with other users | milestone | 0d | 2023-01-16 08:00 | 2023-01-16 08:00 |  | 30d |  |  |  |
| 71 | 2.4 | Print RecipeCard | milestone | 0d | 2023-01-16 08:00 | 2023-01-16 08:00 |  | 30d |  |  |  |
| 72 | 2.5 | Develop eRecipeBox mobile app | milestone | 0d | 2023-01-16 08:00 | 2023-01-16 08:00 |  | 30d |  |  |  |
| 73 | 2.6 | Bug - Adding Keyword slow w/ large data set | milestone | 0d | 2023-01-16 08:00 | 2023-01-16 08:00 |  | 30d |  |  |  |
| 74 | 2.7 | etc. | milestone | 0d | 2023-01-16 08:00 | 2023-01-16 08:00 |  | 30d |  |  |  |
